# SDK 4.0

Schedule from MS Project, 2007-01-19 to 2007-09-13, A marks actual dates.
NCI

## Calendars

- Standard: Mon-Fri 08:00-12:00, 13:00-17:00; Sat-Sun off. Exceptions (off unless hours are given): 2007-02-05 to 2007-02-07, 2007-07-04.

## Resources

| Resource |
| --- |
| Satish |
| Dan |
| Charles |
| Avinash |
| Steve |
| Kunal |
| Doug |
| Satish/Kunal |
| Dan/Kunal |
| Ye |
| C |
| caGrid |
| Kunal/Satish |
| Satish/Dan |
| Christophe |
| Steve A. |
| Ye Wu |
| Vijay |

## Schedule

| ID | WBS | Task | Type | Duration | Start | Finish | Predecessors | Complete | Remaining | Total slack | Constraint | Resources | Work | Actual work |
| --- | --- | --- | --- | --- | --- | --- | --- | --- | --- | --- | --- | --- | --- | --- |
| 1 | 1 | **caCORE SDK v4.0** |  | 165.2d? | 2007-01-19 A | 2007-09-13 |  | 34% | 108.73d? | 0d |  |  | 2842h | 1147.2h |
| 2 | 1.1 | **Inception** |  | 3d | 2007-01-19 A | 2007-01-23 A |  | 100% |  |  |  |  | 8h | 8h |
| 3 | 1.1.1 | 4.0 Kickoff meeting | milestone | 0d | 2007-01-19 A | 2007-01-19 A |  | 100% |  |  | start no earlier than 2007-01-19 | Satish; Charles; Dan; Steve |  |  |
| 4 | 1.1.2 | Create initial task plan |  | 1d | 2007-01-23 A | 2007-01-23 A |  | 100% |  |  |  | Satish | 8h | 8h |
| 5 | 1.2 | **Eloboration** |  | 13d | 2007-01-23 A | 2007-02-13 A |  | 100% |  |  |  |  | 246h | 246h |
| 6 | 1.2.1 | **Requiements meetings** |  | 6.25d | 2007-01-23 A | 2007-01-31 A |  | 100% |  |  |  |  | 78h | 78h |
| 7 | 1.2.1.1 | Requirements meeting (CGEMS, Rambrandt) |  | 0.25d | 2007-01-29 A | 2007-01-29 A |  | 100% |  |  | start no earlier than 2007-01-29 | Satish; Dan; Steve | 6h | 6h |
| 8 | 1.2.1.2 | Requirements Meeting (caCORE API) |  | 0.25d | 2007-01-23 A | 2007-01-23 A |  | 100% |  |  |  | Satish; Dan; Steve | 6h | 6h |
| 9 | 1.2.1.3 | Requirements meeting (caAdapter) |  | 0.25d | 2007-01-30 A | 2007-01-30 A |  | 100% |  |  | start no earlier than 2007-01-30 | Satish; Dan; Steve | 6h | 6h |
| 10 | 1.2.1.4 | Requirements meeting (caDSR) |  | 0.25d | 2007-01-30 A | 2007-01-30 A |  | 100% |  |  | start no earlier than 2007-01-30 | Satish; Dan; Steve | 6h | 6h |
| 11 | 1.2.1.5 | Requirements meeting (caGRID) |  | 0.25d | 2007-01-31 A | 2007-01-31 A |  | 100% |  |  | start no earlier than 2007-01-31 | Satish; Dan; Steve | 6h | 6h |
| 12 | 1.2.1.6 | Requirements meeting (other teams) |  | 2d | 2007-01-29 A | 2007-01-30 A |  | 100% |  |  | start no earlier than 2007-01-29 | Satish; Dan; Steve | 48h | 48h |
| 13 | 1.2.2 | **Scope Document** |  | 10d | 2007-01-26 A | 2007-02-13 A |  | 100% |  |  |  |  | 88h | 88h |
| 14 | 1.2.2.1 | Prepare list of scope items on gforge |  | 1d | 2007-01-26 A | 2007-01-26 A |  | 100% |  |  | start no earlier than 2007-01-26 | Satish | 8h | 8h |
| 15 | 1.2.2.2 | Draft scope document |  | 3d | 2007-01-29 A | 2007-01-31 A | 14 | 100% |  |  |  | Charles | 24h | 24h |
| 16 | 1.2.2.3 | Estimate LOE for Iteration 1 - 3 scope items |  | 1d | 2007-02-01 A | 2007-02-01 A | 15 | 100% |  |  |  | Satish | 8h | 8h |
| 17 | 1.2.2.4 | Prepare risk list |  | 1d | 2007-02-02 A | 2007-02-02 A | 16 | 100% |  |  |  | Charles; Satish | 16h | 16h |
| 18 | 1.2.2.5 | NCICB Review of scope document |  | 3d | 2007-02-08 A | 2007-02-12 A | 17 | 100% |  |  |  | Avinash | 24h | 24h |
| 19 | 1.2.2.6 | Revise scope document |  | 1d | 2007-02-13 A | 2007-02-13 A | 18 | 100% |  |  |  | Charles | 8h | 8h |
| 20 | 1.2.3 | **QA Actvities** |  | 7d | 2007-01-23 A | 2007-01-31 A |  | 100% |  |  |  |  | 72h | 72h |
| 21 | 1.2.3.1 | Setup QA repository | milestone | 0d | 2007-01-23 A | 2007-01-23 A |  | 100% |  |  |  | Steve |  |  |
| 22 | 1.2.3.2 | Modify Unit test cases and data |  | 5d | 2007-01-23 A | 2007-01-29 A | 21 | 100% |  |  |  | Steve | 40h | 40h |
| 23 | 1.2.3.3 | Validate test case |  | 2d | 2007-01-30 A | 2007-01-31 A | 22 | 100% |  |  |  | Steve; Satish | 32h | 32h |
| 24 | 1.2.4 | Revise task plan |  | 0.5d | 2007-01-23 A | 2007-01-23 A |  | 100% |  |  |  | Charles; Satish | 8h | 8h |

| ID | WBS | Task | Duration | Start | Finish | Predecessors | Complete | Remaining | Total slack | Constraint | Resources | Work | Actual work |
| --- | --- | --- | --- | --- | --- | --- | --- | --- | --- | --- | --- | --- | --- |
| 25 | 1.3 | **Construction** | 158.2d? | 2007-01-23 A | 2007-09-06 |  | 33% | 106.54d? | 5d |  |  | 2588h | 893.2h |
| 26 | 1.3.1 | **Iteration 1** | 44d | 2007-01-23 A | 2007-03-28 |  | 98% | 0.97d | 119.2d |  |  | 802h | 753.2h |
| 27 | 1.3.1.1 | **SDK 3.2.1 Release** | 14d | 2007-01-23 A | 2007-02-14 A |  | 100% |  |  |  |  | 112h | 112h |
| 28 | 1.3.1.1.1 | Integrate new UI | 14d | 2007-01-23 A | 2007-02-14 A |  | 100% |  |  |  | Dan | 112h | 112h |
| 29 | 1.3.1.2 | **QA** | 3d | 2007-02-15 A | 2007-02-19 A |  | 100% |  |  |  |  | 24h | 24h |
| 30 | 1.3.1.2.1 | Test new UI | 3d | 2007-02-15 A | 2007-02-19 A | 28 | 100% |  |  |  | Steve | 24h | 24h |
| 31 | 1.3.1.3 | **caGrid Integration** | 33d | 2007-02-12 A | 2007-03-28 |  | 97% | 0.89d | 119.2d |  |  | 666h | 617.2h |
| 32 | 1.3.1.3.1 | **Support multiple concurrent users on the same ApplicationService** | 13.5d | 2007-02-12 A | 2007-03-01 A |  | 100% |  |  |  |  | 112h | 112h |
| 33 | 1.3.1.3.1.1 | Design | 3d | 2007-02-12 A | 2007-02-14 A | 141 | 100% |  |  |  | Satish/Kunal | 24h | 24h |
| 34 | 1.3.1.3.1.2 | Prototype | 3d | 2007-02-15 A | 2007-02-19 A | 33 | 100% |  |  |  | Satish | 24h | 24h |
| 35 | 1.3.1.3.1.3 | Design Review | 0.5d | 2007-02-20 A | 2007-02-20 A | 34 | 100% |  |  |  | Satish; Kunal; Doug; Avinash | 16h | 16h |
| 36 | 1.3.1.3.1.4 | Design Update/Prototype | 3d | 2007-02-20 A | 2007-02-23 A | 35 | 100% |  |  |  | Satish | 24h | 24h |
| 37 | 1.3.1.3.1.5 | Development | 3d | 2007-02-26 A | 2007-03-01 A | 38 | 100% |  |  |  | Satish | 24h | 24h |
| 38 | 1.3.1.3.2 | Use documentation in the Java docs (GF#1243) & Integrate JavaDocs in the web system | 2d | 2007-02-23 A | 2007-02-27 A | 36 | 100% |  |  |  | Satish | 16h | 16h |
| 39 | 1.3.1.3.3 | **Security** | 10.5d | 2007-02-27 A | 2007-03-13 A |  | 100% |  |  |  |  | 128h | 128h |
| 40 | 1.3.1.3.3.1 | Implement Security in Thick Client | 4d | 2007-02-27 A | 2007-03-05 A | 38 | 100% |  |  |  | Satish | 32h | 32h |
| 41 | 1.3.1.3.3.2 | **Integration of new Installation Process into SDK** | 3d | 2007-03-02 A | 2007-03-06 A |  | 100% |  |  |  |  | 24h | 24h |
| 42 | 1.3.1.3.3.2.1 | Code | 3d | 2007-03-02 A | 2007-03-06 A |  | 100% |  |  | start no earlier than 2007-03-02 | Kunal | 24h | 24h |
| 43 | 1.3.1.3.3.3 | **Upgrade to CSM to Support Grid ability to leverage new CSM installation steps** | 3d | 2007-03-07 A | 2007-03-09 A |  | 100% |  |  |  |  | 24h | 24h |
| 44 | 1.3.1.3.3.3.1 | Code | 3d | 2007-03-07 A | 2007-03-09 A | 41 | 100% |  |  |  | Kunal | 24h | 24h |
| 45 | 1.3.1.3.3.4 | **Configurable Authentication and Authorization for SDK Generated System** | 4d | 2007-03-08 A | 2007-03-13 A |  | 100% |  |  |  |  | 32h | 32h |
| 46 | 1.3.1.3.3.4.1 | Code | 4d | 2007-03-08 A | 2007-03-13 A |  | 100% |  |  | start no earlier than 2007-03-08 | Satish | 32h | 32h |
| 47 | 1.3.1.3.3.5 | **Documentation** | 2d | 2007-03-12 A | 2007-03-13 A |  | 100% |  |  |  |  | 16h | 16h |
| 48 | 1.3.1.3.3.5.1 | SDK Programmer's/Technical Guide | 2d | 2007-03-12 A | 2007-03-13 A | 43 | 100% |  |  |  | Kunal/Satish | 16h | 16h |
| 49 | 1.3.1.3.4 | Castor related work was performed on SDK 3.1 branch move to SDK 3.2 | 3d | 2007-02-15 A | 2007-02-19 A | 28 | 100% |  |  |  | Dan | 24h | 24h |
| 50 | 1.3.1.3.5 | Castor mapping for inheritance defect (GF#4031) | 0.25d | 2007-02-20 A | 2007-02-20 A | 49 | 100% |  |  |  | Dan | 2h | 2h |

| ID | WBS | Task | Type | Duration | Start | Finish | Predecessors | Complete | Remaining | Total slack | Free slack | Constraint | Resources | Work | Actual work |
| --- | --- | --- | --- | --- | --- | --- | --- | --- | --- | --- | --- | --- | --- | --- | --- |
| 51 | 1.3.1.3.6 | **Performance due to unnecessary nested sub-selects** |  | 6d | 2007-02-20 A | 2007-02-28 A | 50 | 100% |  |  |  |  |  | 48h | 48h |
| 52 | 1.3.1.3.6.1 | Analysis/Development |  | 6d | 2007-02-20 A | 2007-02-28 A |  | 100% |  |  |  |  | Dan | 48h | 48h |
| 53 | 1.3.1.3.7 | Provide the ability to only generate an XSD and castor mapping based on xmi input |  | 2d | 2007-02-28 A | 2007-03-02 A | 51 | 100% |  |  |  |  | Dan | 16h | 16h |
| 54 | 1.3.1.3.8 | Ability to generate interfaces/POJO for domain classes in our UML model |  | 3d | 2007-03-02 A | 2007-03-07 A | 53 | 100% |  |  |  |  | Dan | 24h | 24h |
| 55 | 1.3.1.3.9 | **QA** |  | 25d | 2007-02-20 A | 2007-03-26 A |  | 100% |  |  |  |  |  | 200h | 200h |
| 56 | 1.3.1.3.9.1 | Test Development |  | 7d | 2007-02-20 A | 2007-02-28 A | 30 | 100% |  |  |  | start no earlier than 2007-02-14 | Steve | 56h | 56h |
| 57 | 1.3.1.3.9.2 | Test Execution |  | 9d | 2007-03-14 A | 2007-03-26 A | 39, 56 | 100% |  |  |  |  | Steve | 72h | 72h |
| 58 | 1.3.1.3.9.3 | Test Support |  | 9d | 2007-03-14 A | 2007-03-26 A | 39 | 100% |  |  |  |  | Satish/Dan | 72h | 72h |
| 59 | 1.3.1.3.10 | **Documentation** |  | 4.75d | 2007-03-20 A | 2007-03-27 A |  | 100% |  |  |  |  |  | 32h | 32h |
| 60 | 1.3.1.3.10.1 | Update Programmers Guide, Release Notes |  | 3d | 2007-03-20 A | 2007-03-23 A |  | 100% |  |  |  |  | Dan | 24h | 24h |
| 61 | 1.3.1.3.10.2 | Review |  | 0.5d | 2007-03-26 A | 2007-03-26 A | 60 | 100% |  |  |  |  | Dan | 4h | 4h |
| 62 | 1.3.1.3.10.3 | Final |  | 0.5d | 2007-03-27 A | 2007-03-27 A | 61 | 100% |  |  |  |  | Dan | 4h | 4h |
| 63 | 1.3.1.3.11 | Release Packaging |  | 2d | 2007-03-21 A | 2007-03-28 | 57 | 95% | 0.1d | 86d |  |  | Satish | 16h | 15.2h |
| 64 | 1.3.1.3.12 | **Iteration Plan** |  | 2d | 2007-03-27 | 2007-03-28 | 57 |  |  | 104.2d |  |  |  | 48h |  |
| 65 | 1.3.1.3.12.1 | Review Client Feature Request/Revise Task Plan |  | 2d | 2007-03-27 | 2007-03-28 |  |  |  | 78d | 0d |  | Charles; Avinash; Satish | 48h |  |
| 66 | 1.3.1.4 | 3.2.1 Release Complete | milestone | 0d | 2007-03-28 | 2007-03-28 | 65 |  |  | 83d |  |  |  |  |  |
| 67 | 1.3.2 | **Iteration 2** |  | 61.2d? | 2007-03-27 A | 2007-06-20 |  | 20% | 49.01d? | 60d |  |  |  | 718h | 80h |
| 68 | 1.3.2.1 | **SDK 4.0 Release** |  | 61.2d? | 2007-03-27 A | 2007-06-20 |  | 20% | 49.01d? | 60d |  |  |  | 718h | 80h |
| 69 | 1.3.2.1.1 | Update Requirements Document |  | 5d | 2007-03-29 | 2007-04-04 | 65 |  |  | 78d |  |  | Charles [15%] | 6h |  |
| 70 | 1.3.2.1.2 | **Boot Camp Support** |  | 9d | 2007-04-09 | 2007-04-19 |  |  |  | 0d |  |  |  | 40h |  |
| 71 | 1.3.2.1.2.1 | Presentation |  | 3d | 2007-04-09 | 2007-04-11 |  |  |  | 6d | 0d | start no earlier than 2007-04-09 | Satish | 24h |  |
| 72 | 1.3.2.1.2.2 | Demo |  | 2d | 2007-04-18 | 2007-04-19 |  |  |  | 0d |  | start no earlier than 2007-04-18 | Satish | 16h |  |
| 73 | 1.3.2.1.3 | **Upgrade Code Generation Framework** |  | 51.2d? | 2007-03-27 A | 2007-06-06 |  | 34% | 33.96d? | 0d |  |  |  | 408h | 80h |
| 74 | 1.3.2.1.3.1 | Prototype of new Code Gen Framework |  | 10d | 2007-03-27 A | 2007-04-09 A | 58 | 100% |  |  |  |  | Satish [50%] | 40h | 40h |
| 75 | 1.3.2.1.3.2 | Prototype use of ACEGI/CSM for Security |  | 10d | 2007-03-27 A | 2007-04-09 A | 58 | 100% |  |  |  |  | Satish [50%] | 40h | 40h |

| ID | WBS | Task | Duration | Start | Finish | Predecessors | Total slack | Free slack | Constraint | Resources | Work |
| --- | --- | --- | --- | --- | --- | --- | --- | --- | --- | --- | --- |
| 76 | 1.3.2.1.3.3 | **Design** | 9.2d? | 2007-04-12 | 2007-04-25 |  | 0d |  |  |  | 64h |
| 77 | 1.3.2.1.3.3.1 | Overview | 1d | 2007-04-12 | 2007-04-12 | 74, 75, 71 | 6d | 0d |  | Satish | 8h |
| 78 | 1.3.2.1.3.3.2 | Review of Approach | 0.2d | 2007-04-13 | 2007-04-13 | 77 | 6d | 0d |  | Satish; Doug; Kunal; Vijay; Charles | 8h |
| 79 | 1.3.2.1.3.3.3 | Code Gen Detail Design | 2d | 2007-04-13 | 2007-04-17 | 78 | 6d |  |  | Satish | 16h |
| 80 | 1.3.2.1.3.3.4 | ACEGI/CSM Security Detail Design | 2d | 2007-04-20 | 2007-04-23 | 72 | 0d |  |  | Satish | 16h |
| 81 | 1.3.2.1.3.3.5 | Design/Prototype Review | 0.2d? | 2007-04-24 | 2007-04-24 | 80 | 0d |  |  | Satish; Doug; Kunal; Vijay; Charles | 8h |
| 82 | 1.3.2.1.3.3.6 | Design Update | 1d | 2007-04-24 | 2007-04-25 | 81 | 0d |  |  | Satish | 8h |
| 83 | 1.3.2.1.3.4 | Implement new code generation framework | 3d | 2007-04-25 | 2007-04-30 | 76 | 0d |  |  | Satish | 24h |
| 84 | 1.3.2.1.3.5 | Rewrite bean generation for JDK 1.5 | 2d | 2007-04-30 | 2007-05-02 | 83 | 0d |  |  | Satish | 16h |
| 85 | 1.3.2.1.3.6 | Rewrite O/R mapping generation (.hbm.xml, .cfg.xml, ehcache.xml) | 10d | 2007-05-02 | 2007-05-30 | 84 | 0d |  |  | Satish | 80h |
| 86 | 1.3.2.1.3.7 | **Implement class cache for JDK 1.5** | 7d | 2007-05-11 | 2007-05-22 | 114, 118 | 4.7d | 0d |  |  | 56h |
| 87 | 1.3.2.1.3.7.1 | Development | 4d | 2007-05-11 | 2007-05-17 |  | 4.7d | 0d |  | Dan | 32h |
| 88 | 1.3.2.1.3.7.2 | Integration of class cache in web tier | 1d | 2007-05-17 | 2007-05-18 | 87 | 4.7d | 0d |  | Dan | 8h |
| 89 | 1.3.2.1.3.7.3 | Change nestedCriteria to use class cache | 1d | 2007-05-18 | 2007-05-21 | 88 | 4.7d | 0d |  | Dan | 8h |
| 90 | 1.3.2.1.3.7.4 | Change CQL translator to use class cache | 1d | 2007-05-21 | 2007-05-22 | 89 | 4.7d | 0d |  | Dan | 8h |
| 91 | 1.3.2.1.3.8 | Rewrite XML schema generaotor | 2d | 2007-05-22 | 2007-05-24 | 86 | 4.7d | 0d |  | Dan | 16h |
| 92 | 1.3.2.1.3.9 | Rewrite XML mapping file generator | 2d | 2007-05-24 | 2007-05-28 | 91 | 4.7d | 0d |  | Dan | 16h |
| 93 | 1.3.2.1.3.10 | Build Script | 2d | 2007-05-28 | 2007-05-30 | 92 | 4.7d |  |  | Dan | 16h |
| 94 | 1.3.2.1.3.11 | Supporting files generation (coreBeans.properties, DAOConfig.xml) | 5d | 2007-05-30 | 2007-06-06 | 85 | 0d |  |  | Satish | 40h |
| 95 | 1.3.2.1.4 | **QA** | 40d | 2007-04-25 | 2007-06-20 |  | 30d |  |  |  | 240h |
| 96 | 1.3.2.1.4.1 | Test Development | 10d | 2007-04-25 | 2007-05-09 | 76 | 85d | 0d | start no earlier than 2007-03-05 | Steve | 80h |
| 97 | 1.3.2.1.4.2 | Test Execution | 10d | 2007-06-06 | 2007-06-20 | 73 | 55d | 0d |  | Steve | 80h |
| 98 | 1.3.2.1.4.3 | Test Support | 10d | 2007-06-06 | 2007-06-20 | 73 | 0d |  |  | Satish | 80h |
| 99 | 1.3.2.1.5 | **Iteration Plan** | 1d | 2007-05-22 | 2007-05-23 |  | 79.7d |  |  |  | 24h |
| 100 | 1.3.2.1.5.1 | Review Client Feature Request/Revise Task Plan | 1d | 2007-05-22 | 2007-05-23 | 90 | 79.7d |  |  | Charles; Avinash; Satish | 24h |

| ID | WBS | Task | Type | Duration | Start | Finish | Predecessors | Complete | Remaining | Total slack | Free slack | Constraint | Resources | Work | Actual work |
| --- | --- | --- | --- | --- | --- | --- | --- | --- | --- | --- | --- | --- | --- | --- | --- |
| 101 | 1.3.3 | **Iteration 3** |  | 47.25d | 2007-03-07 A | 2007-05-11 |  | 16% | 39.84d | 87.7d |  |  |  | 550h | 60h |
| 102 | 1.3.3.1 | **Release 4.0 Beta 1** |  | 47.25d | 2007-03-07 A | 2007-05-11 |  | 16% | 39.84d | 87.7d |  |  |  | 550h | 60h |
| 103 | 1.3.3.1.1 | Update Requirements Document |  | 5d | 2007-04-05 | 2007-04-11 | 69 |  |  | 104.2d | 19.2d |  | Charles [15%] | 6h |  |
| 104 | 1.3.3.1.2 | **Open Source Modeling Tool XMI Processor** |  | 37.25d | 2007-03-07 A | 2007-04-27 |  | 38% | 23.28d | 97.7d |  |  |  | 288h | 60h |
| 105 | 1.3.3.1.2.1 | Evaluation |  | 4d | 2007-03-07 A | 2007-04-02 A | 62 | 100% |  |  |  |  | Dan | 32h | 32h |
| 106 | 1.3.3.1.2.2 | Present Evaluation for review |  | 0.5d | 2007-04-02 A | 2007-04-02 A | 105 | 100% |  |  |  |  | Dan | 4h | 4h |
| 107 | 1.3.3.1.2.3 | Build SDK Test Model |  | 3d | 2007-04-02 A | 2007-04-05 A | 106 | 100% |  |  |  |  |  |  |  |
| 108 | 1.3.3.1.2.4 | Revise Evaluation/Finalize On Tool |  | 3d | 2007-04-05 A | 2007-04-09 A | 107 | 100% |  |  |  |  | Dan | 24h | 24h |
| 109 | 1.3.3.1.2.5 | Design |  | 2d | 2007-04-10 | 2007-04-11 | 108 |  |  | 4.7d | 0d |  | Dan | 16h |  |
| 110 | 1.3.3.1.2.6 | Design Review |  | 1d | 2007-04-12 | 2007-04-12 | 109 |  |  | 4.7d | 0d | start no earlier than 2007-04-09 | Dan; Satish; Christophe; Ye | 32h |  |
| 111 | 1.3.3.1.2.7 | Finalize Design |  | 0.5d | 2007-04-13 | 2007-04-13 | 110 |  |  | 4.7d | 0d |  | Dan | 4h |  |
| 112 | 1.3.3.1.2.8 | Evaluate LOE/Revise Task Plan for Development |  | 4d | 2007-04-13 | 2007-04-19 | 111 |  |  | 103.7d |  |  | Charles; Steve A.; Ye Wu | 96h |  |
| 113 | 1.3.3.1.2.9 | Development |  | 10d | 2007-04-13 | 2007-04-27 | 111 |  |  | 4.7d | 0d |  | Dan | 80h |  |
| 114 | 1.3.3.1.3 | **QA** |  | 20d | 2007-04-13 | 2007-05-11 |  |  |  | 4.7d | 0d |  |  | 152h |  |
| 115 | 1.3.3.1.3.1 | Test Development |  | 5d | 2007-04-13 | 2007-04-20 | 111 |  |  | 19.7d |  |  | Steve | 40h |  |
| 116 | 1.3.3.1.3.2 | Test Execution |  | 10d | 2007-04-27 | 2007-05-11 | 113 |  |  | 4.7d |  |  | Steve | 80h |  |
| 117 | 1.3.3.1.3.3 | Test Support |  | 8d | 2007-04-27 | 2007-05-09 | 113 |  |  | 6.7d |  |  | Dan [50%] | 32h |  |
| 118 | 1.3.3.1.4 | Release Packaging |  | 8d | 2007-04-27 | 2007-05-09 | 113 |  |  | 6.7d | 2d |  | Dan [50%] | 32h |  |
| 119 | 1.3.3.1.5 | **Iteration Plan** |  | 3d | 2007-04-27 | 2007-05-02 |  |  |  | 94.7d | 7d |  |  | 72h |  |
| 120 | 1.3.3.1.5.1 | Review Client Feature Request/Revise Task Plan |  | 3d | 2007-04-27 | 2007-05-02 | 113 |  |  | 94.7d |  |  | Charles; Avinash; Satish | 72h |  |
| 121 | 1.3.3.1.6 | Iteration 3 Complete | milestone | 0d | 2007-05-11 | 2007-05-11 | 114, 119 |  |  | 87.7d |  |  |  |  |  |
| 122 | 1.3.4 | **Iteration 4** |  | 108.2d | 2007-01-23 | 2007-06-27 |  |  |  | 55d |  |  |  | 494h |  |
| 123 | 1.3.4.1 | **Release 4.0 Beta 1** |  | 24.5d | 2007-01-23 | 2007-03-01 |  |  |  | 138.7d |  |  |  | 226h |  |
| 124 | 1.3.4.1.1 | Update Requirements Document |  | 5d | 2007-01-23 | 2007-01-29 |  |  |  | 153.2d | 0d |  | Charles [15%] | 6h |  |

| ID | WBS | Task | Type | Duration | Start | Finish | Predecessors | Total slack | Free slack | Constraint | Resources | Work |
| --- | --- | --- | --- | --- | --- | --- | --- | --- | --- | --- | --- | --- |
| 125 | 1.3.4.1.2 | **Support multiple ApplicationService in same JVM** |  | 10d | 2007-02-12 | 2007-02-23 |  | 138.7d | 0d |  |  | 92h |
| 126 | 1.3.4.1.2.1 | Design |  | 3d | 2007-02-12 | 2007-02-14 |  | 138.7d | 0d | start no earlier than 2007-02-12 | Dan | 24h |
| 127 | 1.3.4.1.2.2 | Design Review |  | 0.5d | 2007-02-15 | 2007-02-15 | 126 | 138.7d | 0d |  | Satish; Kunal; Doug; Avinash | 16h |
| 128 | 1.3.4.1.2.3 | Design Update |  | 0.5d | 2007-02-15 | 2007-02-15 | 127 | 138.7d | 0d |  | Dan | 4h |
| 129 | 1.3.4.1.2.4 | Development/Unit Test |  | 6d | 2007-02-16 | 2007-02-23 | 128 | 138.7d |  |  | Dan | 48h |
| 130 | 1.3.4.1.3 | **Improved logging/trace messages** |  | 2.5d | 2007-02-26 | 2007-02-28 | 125 | 138.7d | 0d |  |  | 20h |
| 131 | 1.3.4.1.3.1 | Development |  | 2.5d | 2007-02-26 | 2007-02-28 |  | 138.7d |  |  | Dan | 20h |
| 132 | 1.3.4.1.4 | Unrecognized database format for EA (GF#3955) |  | 0.5d | 2007-02-28 | 2007-02-28 | 130 | 138.7d | 0d |  | Dan | 4h |
| 133 | 1.3.4.1.5 | Build script change for downloading MySQL (GF#2933) |  | 0.5d | 2007-03-01 | 2007-03-01 | 132 | 138.7d |  |  | Dan | 4h |
| 134 | 1.3.4.1.6 | **QA** |  | 10d | 2007-01-23 | 2007-02-08 |  | 153.2d |  |  |  | 100h |
| 135 | 1.3.4.1.6.1 | Test Development |  | 5d | 2007-01-30 | 2007-02-08 | 124 | 153.2d |  |  | Steve | 40h |
| 136 | 1.3.4.1.6.2 | Test Execution |  | 5d | 2007-01-23 | 2007-01-29 |  | 158.2d |  |  | Steve | 40h |
| 137 | 1.3.4.1.6.3 | Test Support |  | 2.5d | 2007-01-23 | 2007-01-25 |  | 160.7d |  |  | Dan | 20h |
| 138 | 1.3.4.2 | Release 4.0 Beta 1 Complete | milestone | 0d | 2007-05-01 | 2007-05-01 | 130 | 95.2d | 0d | start no earlier than 2007-05-01 |  |  |
| 139 | 1.3.4.3 | Review Client Feature Request/Revise Task Plan |  | 1d | 2007-05-01 | 2007-05-01 | 138 | 95.2d |  |  | Charles; Avinash; Satish | 24h |
| 140 | 1.3.4.4 | **Support multiple ApplicationService in same JVM** |  | 10d | 2007-02-12 | 2007-02-23 |  | 79.7d | 0d |  |  | 92h |
| 141 | 1.3.4.4.1 | Design |  | 3d | 2007-02-12 | 2007-02-14 |  | 79.7d | 0d | start no earlier than 2007-02-12 | Dan | 24h |
| 142 | 1.3.4.4.2 | Design Review |  | 0.5d | 2007-02-15 | 2007-02-15 | 141 | 79.7d | 0d |  | Satish; Kunal; Doug; Avinash | 16h |
| 143 | 1.3.4.4.3 | Design Update |  | 0.5d | 2007-02-15 | 2007-02-15 | 142 | 79.7d | 0d |  | Dan | 4h |
| 144 | 1.3.4.4.4 | Development/Unit Test |  | 6d | 2007-02-16 | 2007-02-23 | 143 | 79.7d |  |  | Dan | 48h |
| 145 | 1.3.4.5 | **Improved logging/trace messages** |  | 2.5d | 2007-02-26 | 2007-02-28 | 140 | 79.7d | 0d |  |  | 20h |
| 146 | 1.3.4.5.1 | Development |  | 2.5d | 2007-02-26 | 2007-02-28 |  | 79.7d |  |  | Dan | 20h |
| 147 | 1.3.4.6 | Unrecognized database format for EA (GF#3955) |  | 0.5d | 2007-02-28 | 2007-02-28 | 145 | 138.7d | 0d |  | Dan | 4h |
| 148 | 1.3.4.7 | Build script change for downloading MySQL (GF#2933) |  | 0.5d | 2007-03-01 | 2007-03-01 | 147 | 138.7d |  |  | Dan | 4h |

| ID | WBS | Task | Type | Duration | Start | Finish | Predecessors | Total slack | Free slack | Constraint | Resources | Work |
| --- | --- | --- | --- | --- | --- | --- | --- | --- | --- | --- | --- | --- |
| 149 | 1.3.4.8 | **QA** |  | 35d | 2007-05-09 | 2007-06-27 |  | 55d |  |  |  | 100h |
| 150 | 1.3.4.8.1 | Test Development |  | 5d | 2007-05-09 | 2007-05-16 | 103, 96 | 85d |  |  | Steve | 40h |
| 151 | 1.3.4.8.2 | Test Execution |  | 5d | 2007-06-20 | 2007-06-27 | 97 | 55d |  |  | Steve | 40h |
| 152 | 1.3.4.8.3 | Test Support |  | 2.5d | 2007-06-20 | 2007-06-22 | 97 | 57.5d |  |  | Dan | 20h |
| 153 | 1.3.4.9 | Release 4.0 Beta 1 Complete | milestone | 0d | 2007-06-20 | 2007-06-20 | 98, 145 | 0d |  | start no earlier than 2007-05-01 |  |  |
| 154 | 1.3.4.10 | Review Client Feature Request/Revise Task Plan |  | 1d | 2007-06-20 | 2007-06-21 | 153 | 59d |  |  | Charles; Avinash; Satish | 24h |
| 155 | 1.3.5 | **Iteration 5** |  | 21d? | 2007-06-20 | 2007-07-20 | 153 | 0d |  |  |  | 24h |
| 156 | 1.3.5.1 | Release 4.0 Beta 2 |  | 20d | 2007-06-20 | 2007-07-19 |  | 0d |  |  |  |  |
| 157 | 1.3.5.2 | Review Client Feature Request/Revise Task Plan |  | 1d? | 2007-07-19 | 2007-07-20 | 156 | 39d |  |  | Charles; Avinash; Satish | 24h |
| 158 | 1.3.6 | **Iteration 6** |  | 15d | 2007-07-19 | 2007-08-09 | 156 | 0d |  |  |  |  |
| 159 | 1.3.6.1 | Release 4.0 Final |  | 15d | 2007-07-19 | 2007-08-09 |  | 0d |  |  |  |  |
| 160 | 1.3.7 | Integration Test |  | 10d | 2007-08-09 | 2007-08-23 | 158 | 5d | 0d |  |  |  |
| 161 | 1.3.8 | UAT Test |  | 10d | 2007-08-23 | 2007-09-06 | 160 | 5d |  |  |  |  |
| 162 | 1.4 | **Transition** |  | 25d | 2007-08-09 | 2007-09-13 |  | 0d |  |  |  |  |
| 163 | 1.4.1 | **Documentation** |  | 25d | 2007-08-09 | 2007-09-13 | 158 | 0d |  |  |  |  |
| 164 | 1.4.1.1 | New users guide |  | 10d | 2007-08-09 | 2007-08-23 |  | 0d |  | start no earlier than 2007-06-15 |  |  |
| 165 | 1.4.1.2 | New technical guide |  | 10d | 2007-08-23 | 2007-09-06 | 164 | 0d |  | start no earlier than 2007-06-15 |  |  |
| 166 | 1.4.1.3 | How to example |  | 5d | 2007-09-06 | 2007-09-13 | 165 | 0d |  | start no earlier than 2007-06-15 |  |  |
| 167 | 1.4.2 | 4.0 Release Complete | milestone | 0d | 2007-09-13 | 2007-09-13 | 163 | 0d |  |  |  |  |
